# Plan_de_Trabajo

Schedule from MS Project, 2017-02-07 to 2017-06-09, status date 2017-02-07, A marks actual dates.

## Calendars

- Estándar: Mon-Fri 09:00-13:00, 15:00-19:00; Sat-Sun off. Exceptions (off unless hours are given): 2017-02-25 to 2017-02-26 09:00-13:00, 15:00-19:00, 2017-03-01 (Suspensión de Clases), 2017-03-18 (Suspensión de Clases), 2017-03-20 (Suspensión de Clases), 2017-04-10 to 2017-04-14 (Semana Santa), 2017-05-01 (Suspensión de Clases), 2017-05-15 (Suspensión de Clases).

## Resources

| Resource |
| --- |
| Fernando |
| Mares |
| Angel |

## Schedule

| ID | WBS | Task | Type | Duration | Start | Finish | Predecessors | Complete | Remaining | Actual finish | Baseline start | Baseline finish | Baseline duration | Baseline 1 start | Baseline 1 finish | Total slack | Constraint | Resources | Work | Actual work |
| --- | --- | --- | --- | --- | --- | --- | --- | --- | --- | --- | --- | --- | --- | --- | --- | --- | --- | --- | --- | --- |
| 1 | 1 | **Alessandra** |  | 82d | 2017-02-07 A | 2017-06-09 |  | 56% | 35.8d |  | 2017-02-07 | 2017-05-26 | 70d | 2017-02-07 | 2017-06-09 |  |  |  | 4476h | 1574h |
| 2 | 1.1 | **Primera Entrega** |  | 11d | 2017-02-07 A | 2017-02-21 |  | 100% |  | 2017-02-16 | 2017-02-07 | 2017-03-13 | 24d | 2017-02-07 | 2017-02-21 |  |  |  | 232h | 232h |
| 3 | 1.1.1 | Elección de la técnologia |  | 2d | 2017-02-07 A | 2017-02-08 A |  | 100% |  |  | 2017-02-07 | 2017-02-08 | 2d | 2017-02-07 | 2017-02-08 |  |  | Fernando; Mares | 32h | 32h |
| 4 | 1.1.2 | **Análisis de Requerimientos** |  | 6d | 2017-02-09 A | 2017-02-16 A |  | 100% |  |  | 2017-02-07 | 2017-02-14 | 6d | 2017-02-09 | 2017-02-16 |  |  |  | 200h | 200h |
| 5 | 1.1.2.1 | **ERS** |  | 6d | 2017-02-09 A | 2017-02-16 A | 3 | 100% |  |  | 2017-02-09 | 2017-02-14 | 4d | 2017-02-09 | 2017-02-16 |  |  |  | 200h | 200h |
| 6 | 1.1.2.1.1 | Modelo de Casos de Uso |  | 3d | 2017-02-09 A | 2017-02-13 A |  | 100% |  |  | 2017-02-09 | 2017-02-13 | 3d | 2017-02-09 | 2017-02-13 |  |  | Fernando | 24h | 24h |
| 7 | 1.1.2.1.2 | Escritura Primaria del ERS |  | 4d | 2017-02-09 A | 2017-02-14 A |  | 100% |  |  | 2017-02-09 | 2017-02-14 | 4d | 2017-02-09 | 2017-02-14 |  |  | Mares | 32h | 32h |
| 8 | 1.1.2.1.3 | Diseño de interfaces |  | 6d | 2017-02-09 A | 2017-02-16 A |  | 100% |  |  | 2017-02-07 | 2017-02-14 | 6d | 2017-02-09 | 2017-02-16 |  |  | Mares | 48h | 48h |
| 9 | 1.1.2.1.4 | Descripción de Casos de Uso |  | 6d | 2017-02-09 A | 2017-02-16 A |  | 100% |  |  | 2017-02-07 | 2017-02-14 | 6d | 2017-02-09 | 2017-02-16 |  |  | Fernando; Mares | 96h | 96h |
| 10 | 1.2 | **Segunda Entrega** |  | 52d | 2017-02-21 A | 2017-05-11 |  | 64% | 18.71d |  | 2017-03-14 | 2017-03-15 | 2d | 2017-02-21 | 2017-05-11 |  |  |  | 2176h | 1342h |
| 11 | 1.2.1 | Estimación de puntos COSMIC | manual | 1d | 2017-02-21 A | 2017-02-21 A |  | 100% |  |  |  |  |  | 2017-02-21 | 2017-02-21 |  |  | Mares | 8h | 8h |
| 12 | 1.2.2 | Plan de Pruebas | manual | 8d | 2017-03-03 | 2017-03-14 |  |  |  |  | 2017-03-14 | 2017-03-15 | 2d | 2017-03-03 | 2017-03-14 |  |  | Fernando; Mares; Angel | 144h |  |
| 13 | 1.2.3 | Modelo del Dominio |  | 5d | 2017-02-21 A | 2017-03-03 | 5 | 60% | 2d |  | 2017-02-15 | 2017-02-20 | 4d | 2017-02-21 | 2017-03-03 | 0d |  | Mares | 40h | 24h |
| 14 | 1.2.4 | Modelo de Clases |  | 7d | 2017-02-26 A | 2017-03-04 | 13 | 43% | 4d |  | 2017-02-17 | 2017-02-23 | 4d | 2017-02-26 | 2017-03-04 | 62d | start no earlier than 2017-02-17 | Mares | 56h | 24h |
| 15 | 1.2.5 | **Modelos de Robustes** |  | 10d | 2017-02-21 A | 2017-03-03 | 5 | 86% | 1.36d |  | 2017-02-15 | 2017-02-21 | 5d | 2017-02-21 | 2017-03-03 |  |  |  | 176h | 152h |
| 16 | 1.2.5.1 | CRUD Grupos |  | 3d | 2017-02-21 A | 2017-02-23 A |  | 100% |  |  |  |  |  | 2017-02-21 | 2017-02-23 |  | start no earlier than 2017-02-21 | Fernando | 24h | 24h |
| 17 | 1.2.5.2 | CRUD Alumnos | manual | 1d | 2017-02-21 A | 2017-02-21 A |  | 100% |  |  |  |  |  | 2017-02-21 | 2017-02-21 |  |  | Fernando | 8h | 8h |
| 18 | 1.2.5.3 | CRUD Promociones |  | 3d | 2017-02-21 | 2017-02-22 |  |  |  |  |  |  |  | 2017-02-21 | 2017-02-22 | 71d | start no earlier than 2017-02-21 | Fernando | 24h |  |
| 19 | 1.2.5.4 | CRUD Colaboradores |  | 3d | 2017-02-26 A | 2017-02-28 A |  | 100% |  |  |  |  |  | 2017-02-26 | 2017-02-28 |  | start no earlier than 2017-02-26 | Mares | 24h | 24h |
| 20 | 1.2.5.5 | Registrar Asistencia |  | 2d | 2017-02-24 A | 2017-02-25 A |  | 100% |  |  |  |  |  | 2017-02-24 | 2017-02-25 |  | start no earlier than 2017-02-24 | Mares | 16h | 16h |
| 21 | 1.2.5.6 | Generar Recibo |  | 2d | 2017-02-25 A | 2017-02-26 A |  | 100% |  |  |  |  |  | 2017-02-25 | 2017-02-26 |  | start no earlier than 2017-02-25 | Mares | 16h | 16h |
| 22 | 1.2.5.7 | Reporte Mensual |  | 2d | 2017-02-24 A | 2017-02-25 A |  | 100% |  |  |  |  |  | 2017-02-24 | 2017-02-25 |  | start no earlier than 2017-02-24 | Mares | 16h | 16h |
| 23 | 1.2.5.8 | Registrar Cobro de Curso |  | 3d | 2017-02-27 A | 2017-03-02 A |  | 100% |  |  |  |  |  | 2017-02-27 | 2017-03-02 |  | start no earlier than 2017-02-27 | Fernando | 24h | 24h |
| 24 | 1.2.5.9 | Registrar Egreso |  | 3d | 2017-02-28 A | 2017-03-03 A |  | 100% |  |  |  |  |  | 2017-02-28 | 2017-03-03 |  | start no earlier than 2017-02-28 | Fernando | 24h | 24h |

Notes:
- 5: Según el formato de la IEEE830 / Breve resumen de los casos de uso en el punto 2.1
- 10: Entega del 40% de casos de uso
- 12: Tabla de 5 columnas: / ·Entradas / ·Condiciones de entrada / ·Salidas esperadas / ·Condiciones de salida esperadas / ·Resultado / Pruebas que sirven. / Pruebas que fallan. / ~8 Pruebas por caso de uso~

| ID | WBS | Task | Type | Duration | Start | Finish | Predecessors | Complete | Remaining | Baseline start | Baseline finish | Baseline duration | Baseline 1 start | Baseline 1 finish | Total slack | Constraint | Resources | Work | Actual work |
| --- | --- | --- | --- | --- | --- | --- | --- | --- | --- | --- | --- | --- | --- | --- | --- | --- | --- | --- | --- |
| 25 | 1.2.6 | **Modelos de Secuencia** |  | 8d | 2017-03-03 A | 2017-03-14 | 15 | 72% | 2.25d | 2017-02-17 | 2017-02-24 | 5d | 2017-03-03 | 2017-03-14 |  |  |  | 192h | 138h |
| 26 | 1.2.6.1 | CRUD Grupos |  | 3d | 2017-03-03 A | 2017-03-07 |  | 64% | 1.08d |  |  |  | 2017-03-03 | 2017-03-07 | 61d |  | Mares | 24h | 15.33h |
| 27 | 1.2.6.2 | CRUD Alumnos | manual | 2d | 2017-03-03 A | 2017-03-07 |  | 96% | 0.08d |  |  |  | 2017-03-03 | 2017-03-07 |  |  | Mares | 16h | 15.33h |
| 28 | 1.2.6.3 | CRUD Promociones |  | 3d | 2017-03-06 A | 2017-03-08 |  | 64% | 1.08d |  |  |  | 2017-03-06 | 2017-03-08 | 60d |  | Mares | 24h | 15.33h |
| 29 | 1.2.6.4 | CRUD Colaboradores |  | 3d | 2017-03-06 A | 2017-03-08 |  | 64% | 1.08d |  |  |  | 2017-03-06 | 2017-03-08 | 60d |  | Fernando | 24h | 15.33h |
| 30 | 1.2.6.5 | Registrar Asistencia |  | 2d | 2017-03-08 A | 2017-03-09 |  | 96% | 0.08d |  |  |  | 2017-03-08 | 2017-03-09 | 58d |  | Fernando | 16h | 15.33h |
| 31 | 1.2.6.6 | Generar Recibo |  | 2d | 2017-03-08 A | 2017-03-09 |  | 96% | 0.08d |  |  |  | 2017-03-08 | 2017-03-09 | 58d |  | Fernando | 16h | 15.33h |
| 32 | 1.2.6.7 | Reporte Mensual |  | 2d | 2017-03-09 A | 2017-03-10 |  | 96% | 0.08d |  |  |  | 2017-03-09 | 2017-03-10 | 57d |  | Fernando | 16h | 15.33h |
| 33 | 1.2.6.8 | Registrar Cobro de Curso |  | 3d | 2017-03-09 A | 2017-03-11 |  | 64% | 1.08d |  |  |  | 2017-03-09 | 2017-03-11 | 57d |  | Mares | 24h | 15.33h |
| 34 | 1.2.6.9 | Registrar Egreso |  | 4d | 2017-03-09 A | 2017-03-11 |  | 48% | 2.08d |  |  |  | 2017-03-09 | 2017-03-11 | 57d |  | Mares | 32h | 15.33h |
| 35 | 1.2.7 | **Programación de Modulos** |  | 39d | 2017-03-08 A | 2017-05-10 |  | 63% | 14.47d |  |  |  | 2017-03-08 | 2017-05-10 |  |  |  | 1520h | 956h |
| 36 | 1.2.7.1 | CRUD Grupos |  | 8d | 2017-03-08 A | 2017-03-17 A |  | 100% |  |  |  |  | 2017-03-08 | 2017-03-17 |  |  | Fernando | 64h | 64h |
| 37 | 1.2.7.2 | CRUD Alumnos | manual | 12d | 2017-03-17 A | 2017-04-04 A |  | 100% |  |  |  |  | 2017-03-17 | 2017-04-04 |  |  | Fernando | 96h | 96h |
| 38 | 1.2.7.3 | CRUD Promociones |  | 10d | 2017-04-04 A | 2017-04-21 |  | 80% | 2d |  |  |  | 2017-04-04 | 2017-04-21 | 33.75d |  | Fernando | 80h | 64h |
| 39 | 1.2.7.4 | CRUD Colaboradores |  | 11d | 2017-04-04 A | 2017-04-22 |  | 82% | 2d |  |  |  | 2017-04-04 | 2017-04-22 | 33d |  | Fernando | 88h | 72h |
| 40 | 1.2.7.5 | Registrar Asistencia |  | 8d | 2017-04-07 A | 2017-04-20 |  | 38% | 5d |  |  |  | 2017-04-07 | 2017-04-20 | 34.75d |  | Fernando | 64h | 24h |
| 41 | 1.2.7.6 | Generar Recibo |  | 9d | 2017-04-25 A | 2017-05-04 |  | 58% | 3.75d |  |  |  | 2017-04-25 | 2017-05-04 | 25.25d | start no earlier than 2017-04-21 | Fernando | 72h | 42h |
| 42 | 1.2.7.7 | Reporte Mensual |  | 8d | 2017-04-25 A | 2017-05-03 |  | 56% | 3.5d |  |  |  | 2017-04-25 | 2017-05-03 | 26.25d | start no earlier than 2017-04-21 | Fernando | 64h | 36h |
| 43 | 1.2.7.8 | Registrar Cobro de Curso |  | 12d | 2017-04-04 A | 2017-04-20 |  | 42% | 7d |  |  |  | 2017-04-04 | 2017-04-20 | 35d |  | Fernando | 96h | 40h |
| 44 | 1.2.7.9 | Registrar Egreso |  | 10d | 2017-04-04 A | 2017-04-19 |  | 50% | 5d |  |  |  | 2017-04-04 | 2017-04-19 | 35.75d |  | Fernando | 80h | 40h |
| 45 | 1.2.7.10 | Notificaciones |  | 7d | 2017-05-08 | 2017-05-10 |  |  |  |  |  |  | 2017-05-08 | 2017-05-10 | 21d | finish no earlier than 2017-05-10 | Fernando | 56h |  |
| 46 | 1.2.7.11 | **Interfaces** |  | 39d | 2017-03-08 A | 2017-05-10 |  | 63% | 14.47d |  |  |  | 2017-03-08 | 2017-05-10 | 21d |  |  | 760h | 478h |
| 47 | 1.2.7.11.1 | CRUD Grupos |  | 8d | 2017-03-08 A | 2017-03-17 A |  | 100% |  |  |  |  | 2017-03-08 | 2017-03-17 |  |  | Mares | 64h | 64h |
| 48 | 1.2.7.11.2 | CRUD Alumnos | manual | 12d | 2017-03-17 A | 2017-04-04 A |  | 100% |  |  |  |  | 2017-03-17 | 2017-04-04 |  |  | Mares | 96h | 96h |
| 49 | 1.2.7.11.3 | CRUD Promociones |  | 10d | 2017-04-04 A | 2017-04-21 |  | 80% | 2d |  |  |  | 2017-04-04 | 2017-04-21 | 33.75d |  | Mares | 80h | 64h |
| 50 | 1.2.7.11.4 | CRUD Colaboradores |  | 11d | 2017-04-04 A | 2017-04-22 |  | 82% | 2d |  |  |  | 2017-04-04 | 2017-04-22 | 33d |  | Mares | 88h | 72h |
| 51 | 1.2.7.11.5 | Registrar Asistencia |  | 8d | 2017-04-07 A | 2017-04-20 |  | 38% | 5d |  |  |  | 2017-04-07 | 2017-04-20 | 34.75d |  | Mares | 64h | 24h |
| 52 | 1.2.7.11.6 | Generar Recibo |  | 9d | 2017-04-25 A | 2017-05-04 |  | 58% | 3.75d |  |  |  | 2017-04-25 | 2017-05-04 | 25.25d | start no earlier than 2017-04-21 | Mares | 72h | 42h |
| 53 | 1.2.7.11.7 | Reporte Mensual |  | 8d | 2017-04-25 A | 2017-05-03 |  | 56% | 3.5d |  |  |  | 2017-04-25 | 2017-05-03 | 26.25d | start no earlier than 2017-04-21 | Mares | 64h | 36h |
| 54 | 1.2.7.11.8 | Registrar Cobro de Curso |  | 12d | 2017-04-04 A | 2017-04-20 |  | 42% | 7d |  |  |  | 2017-04-04 | 2017-04-20 | 35d |  | Mares | 96h | 40h |
| 55 | 1.2.7.11.9 | Registrar Egreso |  | 10d | 2017-04-04 A | 2017-04-19 |  | 50% | 5d |  |  |  | 2017-04-04 | 2017-04-19 | 35.75d |  | Mares | 80h | 40h |
| 56 | 1.2.7.11.10 | Notificaciones |  | 7d | 2017-05-08 | 2017-05-10 |  |  |  |  |  |  | 2017-05-08 | 2017-05-10 | 21d | finish no earlier than 2017-05-10 | Mares | 56h |  |

| ID | WBS | Task | Type | Duration | Start | Finish | Complete | Baseline start | Baseline finish | Baseline duration | Baseline 1 start | Baseline 1 finish | Resources | Work | Actual work |
| --- | --- | --- | --- | --- | --- | --- | --- | --- | --- | --- | --- | --- | --- | --- | --- |
| 57 | 1.2.8 | **Diseño de Base de Datos** |  | 5d | 2017-02-21 A | 2017-02-25 A | 100% | 2017-02-15 | 2017-02-21 | 5d | 2017-02-21 | 2017-02-25 |  | 40h | 40h |
| 58 | 1.2.8.1 | Diagrama Entidad Relación | manual | 5d | 2017-02-21 A | 2017-02-25 A | 100% |  |  |  | 2017-02-21 | 2017-02-25 | Fernando | 40h | 40h |
| 59 | 1.3 | **Entrega Final** |  | 27d | 2017-05-03 | 2017-06-09 |  |  |  |  | 2017-05-03 | 2017-06-09 |  | 2068h |  |
| 60 | 1.3.1 | Manual de Usuario | manual | 24d | 2017-05-03 | 2017-06-06 |  |  |  |  | 2017-05-03 | 2017-06-06 | Angel; Fernando; Mares | 1844h |  |
| 61 | 1.3.2 | **Pruebas** |  | 27d | 2017-05-03 | 2017-06-09 |  |  |  |  | 2017-05-03 | 2017-06-09 |  | 224h |  |
| 62 | 1.3.2.1 | Ejecución de pruebas | manual | 14d | 2017-05-03 | 2017-05-23 |  |  |  |  | 2017-05-03 | 2017-05-23 | Angel | 112h |  |
| 63 | 1.3.2.2 | Documento de Resultado de Ejecución de pruebas | manual | 14d | 2017-05-23 | 2017-06-09 |  |  |  |  | 2017-05-23 | 2017-06-09 | Angel | 112h |  |
